# bgpd-ng

Schedule from MS Project, 2011-01-27 to 2011-03-11.

## Calendars

- Standard: Mon-Fri 08:00-12:00, 13:00-17:00; Sat-Sun off.

## Schedule

| ID | WBS | Task | Type | Duration | Start | Finish | Predecessors | Total slack | Free slack | Constraint |
| --- | --- | --- | --- | --- | --- | --- | --- | --- | --- | --- |
| 1 | 1 | Aloituspalaveri |  | 2h | 2011-01-27 | 2011-01-27 |  | 4.75d | 0.75d |  |
| 2 | 2 | Projektisuunnitelma |  | 2d | 2011-01-28 | 2011-01-31 | 1 | 4d | 0d | finish no earlier than 2011-01-31 |
| 3 | 3 | **Määrittely ja suunnitelu** |  | 7d | 2011-02-01 | 2011-02-09 | 2 | 4d | 0d |  |
| 4 | 3.1 | Suunnittelupalaveri |  | 1d | 2011-02-01 | 2011-02-01 |  | 4d | 0d |  |
| 5 | 3.2 | Toimintamäärittely |  | 3d | 2011-02-02 | 2011-02-04 | 4 | 4d | 0d |  |
| 6 | 3.3 | Suunnittelupalaveri 2 |  | 1d | 2011-02-07 | 2011-02-07 | 5 | 4d | 0d |  |
| 7 | 3.4 | Ohjelmistosuunnittelu |  | 2d | 2011-02-08 | 2011-02-09 | 6 | 4d | 0d |  |
| 8 | 4 | Testausympäristön pystytys |  | 4d | 2011-02-01 | 2011-02-04 | 2 | 7d | 3d |  |
| 9 | 5 | **Toteutus ja testaus** |  | 17d | 2011-02-10 | 2011-03-04 | 3 | 4d |  |  |
| 10 | 5.1 | Sprint 1 |  | 2.5d | 2011-02-10 | 2011-02-14 | 7, 8 | 4d | 0d |  |
| 11 | 5.2 | Sprint 2 |  | 2.5d | 2011-02-14 | 2011-02-16 | 10 | 4d | 0d |  |
| 12 | 5.3 | Sprint 3 |  | 2.5d | 2011-02-17 | 2011-02-21 | 11 | 4d | 0d |  |
| 13 | 5.4 | Kaikki ominaisuudet implementoitu | milestone | 0d | 2011-02-21 | 2011-02-21 | 12 | 13.5d |  |  |
| 14 | 5.5 | Sprint 4 |  | 2.5d | 2011-02-21 | 2011-02-23 | 12 | 4d | 0d |  |
| 15 | 5.6 | Release candidate | milestone | 0d | 2011-02-25 | 2011-02-25 | 14FS+2d | 4d | 0d |  |
| 16 | 5.7 | QA & bug fixes |  | 2d | 2011-02-28 | 2011-03-01 | 15 | 4d | 0d |  |
| 17 | 5.8 | Release candidate 2 | milestone | 0d | 2011-03-01 | 2011-03-01 | 16 | 4d | 0d |  |
| 18 | 5.9 | QA & bug fixes |  | 2d | 2011-03-02 | 2011-03-03 | 17 | 4d | 0d |  |
| 19 | 5.10 | Final release | milestone | 0h | 2011-03-04 | 2011-03-04 | 18FS+1d | 4d |  |  |
| 20 | 6 | Esittely | milestone, manual | 0h | 2011-03-11 | 2011-03-11 | 19 |  |  | start no earlier than 2011-03-11 |
